How a schedule from GanttProject changed from version to version. A marks actual dates.

## Version 1 (saved 2024-06-05)

Note of the change: Gantts for 05.05

| ID | Task | Duration | Start | Finish | Predecessors |
| --- | --- | --- | --- | --- | --- |
| 1 | Общее управление | 85d | 2024-09-02 | 2024-12-27 |  |
| 2 | Web: управление | 75d | 2024-09-16 | 2024-12-27 |  |
| 3 | Тесты: управление | 75d | 2024-09-16 | 2024-12-27 |  |
| 4 | Фаза 0: подготовка | 0d | 2024-09-13 | 2024-09-13 |  |
| 5 | Фронт: инструкции | 5d | 2024-09-02 | 2024-09-06 |  |
| 6 | Фронт: заготовка | 5d | 2024-09-09 | 2024-09-13 |  |
| 7 | Бэк: инструкции | 5d | 2024-09-02 | 2024-09-06 |  |
| 8 | Бэк: заготовка | 5d | 2024-09-09 | 2024-09-13 |  |
| 9 | Схема данных | 5d | 2024-09-02 | 2024-09-06 |  |
| 10 | Описание API | 5d | 2024-09-09 | 2024-09-13 |  |
| 11 | Exec: демо | 5d | 2024-09-02 | 2024-09-06 |  |
| 12 | Exec: инструкции | 5d | 2024-09-09 | 2024-09-13 |  |
| 13 | Тесты: заготовка | 10d | 2024-09-02 | 2024-09-13 |  |
| 14 | Фаза 1 | 0d | 2024-10-25 | 2024-10-25 |  |
| 15 | Тесты: доанализ требований | 25d | 2024-09-16 | 2024-10-18 |  |
| 16 | Web: доанализ требований | 25d | 2024-09-16 | 2024-10-18 |  |
| 17 | Тесты: обучение | 5d | 2024-09-16 | 2024-09-20 |  |
| 18 | Тесты исполняемого файла | 5d | 2024-09-23 | 2024-09-27 | 17 |
| 19 | Тесты модуля конфигурации | 5d | 2024-09-23 | 2024-09-27 | 17 |
| 20 | Тесты cli | 5d | 2024-09-30 | 2024-10-04 |  |
| 21 | Тесты логгера | 5d | 2024-09-30 | 2024-10-04 |  |
| 22 | Тесты IPC | 5d | 2024-10-07 | 2024-10-11 |  |
| 23 | Тесты корректности кэша | 5d | 2024-10-07 | 2024-10-11 |  |
| 24 | Exec: обучение | 5d | 2024-09-16 | 2024-09-20 |  |
| 25 | Exec: запуск бинарника | 5d | 2024-09-23 | 2024-09-27 | 24 |
| 26 | Exec: получение stdin | 5d | 2024-09-30 | 2024-10-04 | 25 |
| 27 | Exec: получение сокета | 5d | 2024-09-30 | 2024-10-04 | 25 |
| 28 | Exec: получение вывода | 5d | 2024-10-07 | 2024-10-11 | 25 |
| 29 | Exec: получение статистик /proc | 5d | 2024-10-07 | 2024-10-11 | 25 |
| 30 | Фронт: обучение | 5d | 2024-09-16 | 2024-09-20 |  |
| 31 | Авторизация пользователя | 5d | 2024-09-16 | 2024-09-20 |  |
| 32 | Изменение пароля | 5d | 2024-09-23 | 2024-09-27 | 31 |
| 33 | Получение групп для пользователя.. | 5d | 2024-09-30 | 2024-10-04 |  |
| 34 | Создание редактирование группы | 5d | 2024-10-07 | 2024-10-11 | 33 |
| 35 | Интеграция: пользователи | 5d | 2024-10-14 | 2024-10-18 | 31, 32, 33, 34, 36, 37, 38, 39, 40, 41, 42 |
| 36 | Восстановление пароля | 5d | 2024-09-23 | 2024-09-27 |  |
| 37 | Welcome страница | 5d | 2024-09-23 | 2024-09-27 |  |
| 38 | Страница входа | 5d | 2024-09-23 | 2024-09-27 |  |
| 39 | Навигация в шапке | 5d | 2024-09-30 | 2024-10-04 |  |
| 40 | Личный кабинет | 5d | 2024-09-30 | 2024-10-04 | 38 |
| 41 | Создание редактирование группы | 5d | 2024-10-07 | 2024-10-11 |  |
| 42 | Экран групп | 5d | 2024-10-07 | 2024-10-11 |  |
| 43 | Фаза 2 | 0d | 2024-11-29 | 2024-11-29 |  |
| 44 | Тесты: доанализ требований 2 | 20d | 2024-10-28 | 2024-11-22 |  |
| 45 | Web: доанализ требований 2 | 20d | 2024-10-28 | 2024-11-22 |  |
| 46 | Тесты многозадачности | 5d | 2024-10-28 | 2024-11-01 |  |
| 47 | Тесты сети | 10d | 2024-10-28 | 2024-11-08 |  |
| 48 | Тесты кэша | 5d | 2024-11-11 | 2024-11-15 |  |
| 49 | Нагрузочные тесты | 10d | 2024-11-04 | 2024-11-15 |  |
| 50 | Exec: жесткие ограничения cgroup 1 | 15d | 2024-10-28 | 2024-11-15 |  |
| 51 | Exec: жесткие ограничения cgroup 2 | 15d | 2024-10-28 | 2024-11-15 |  |
| 52 | Фаза 3 | 0d | 2024-12-27 | 2024-12-27 |  |
| 53 | Тесты: доанализ требований 3 | 20d | 2024-12-02 | 2024-12-27 |  |
| 54 | Web: доанализ требований 3 | 20d | 2024-12-02 | 2024-12-27 |  |
| 55 | Тесты под valgrind и санитайзерами | 10d | 2024-12-02 | 2024-12-13 |  |
| 56 | Тесты с ограниченными ресурсами | 10d | 2024-12-02 | 2024-12-13 |  |
| 57 | Exec: ограничение fs, mount | 10d | 2024-12-02 | 2024-12-13 |  |
| 58 | Exec: ограничение network workspace | 10d | 2024-12-02 | 2024-12-13 |  |

## Version 2 (saved 2024-06-07)

Note of the change: yattr results for thursday

Last finish stays 2024-12-27.

Added:

| ID | Task | Duration | Start | Finish | Predecessors | Resources |
| --- | --- | --- | --- | --- | --- | --- |
| 43 | Восстановление пароля | 5d | 2024-09-16 | 2024-09-20 |  | Back dev 2 |
| 44 | Имплементация создания теста | 5d | 2024-09-16 | 2024-09-20 |  | Back dev 2 |
| 45 | Имплементация получения теста | 5d | 2024-09-23 | 2024-09-27 | 44 | Back dev 2 |
| 46 | Имплементация поиска тестов по имени | 5d | 2024-09-23 | 2024-09-27 | 44 | Back dev 2 |
| 47 | Имплементация удаления тестов | 5d | 2024-09-30 | 2024-10-04 | 44 | Back dev 2 |
| 48 | Имплементация редактирования тестов | 5d | 2024-09-30 | 2024-10-04 | 44 | Back dev 2 |
| 49 | Интеграция: тесты | 5d | 2024-10-28 | 2024-11-01 | 44, 45, 46, 47, 48, 50, 51, 52, 53 | Back dev 2; Front dev 2 |
| 50 | Модальное окно создания теста | 5d | 2024-09-16 | 2024-09-20 |  | Front dev 2 |
| 51 | Модальное окно просмотра теста | 5d | 2024-09-23 | 2024-09-27 |  | Front dev 2 |
| 52 | Модальное окно редактирования теста | 5d | 2024-09-30 | 2024-10-04 |  | Front dev 2 |
| 53 | Страница просмотра тестов | 5d | 2024-09-30 | 2024-10-04 |  | Front dev 2 |
| 54 | Имплементация создания лабораторной | 5d | 2024-10-14 | 2024-10-18 |  | Back dev 2 |
| 55 | Имплементация получения лабораторной | 5d | 2024-10-14 | 2024-10-18 |  | Back dev 2 |
| 56 | Имплементация редактирования лабораторной | 5d | 2024-10-21 | 2024-10-25 | 54 | Back dev 2 |
| 57 | Имплементация удаления лабораторной | 5d | 2024-10-21 | 2024-10-25 | 54 | Back dev 2 |
| 58 | Интеграция: лабораторные | 5d | 2024-10-28 | 2024-11-01 | 54, 55, 56, 57, 59, 60, 61, 62, 63, 64, 65, 66, 67 | Back dev 2; Front dev 3 |
| 59 | Модальное окно создания лабораторной | 5d | 2024-09-16 | 2024-09-20 |  | Front dev 3 |
| 60 | Часть модального окна создания/редактирования лабораторной - форма выбора тестов | 5d | 2024-09-16 | 2024-09-20 |  | Front dev 3 |
| 61 | Страница просмотра лабораторной | 5d | 2024-09-23 | 2024-09-27 |  | Front dev 3 |
| 62 | Модальное окно редактирования лабораторной | 5d | 2024-09-30 | 2024-10-04 |  | Front dev 3 |
| 63 | Страница просмотра лабораторных | 5d | 2024-10-07 | 2024-10-11 |  | Front dev 3 |
| 64 | Модификация страницы просмотра лабораторных - для студента | 3d | 2024-10-14 | 2024-10-16 |  | Front dev 3 |
| 65 | Модификация страницы просмотра лабораторных - для учителя | 3d | 2024-10-14 | 2024-10-16 |  | Front dev 3 |
| 66 | Модификация страницы просмотра лабораторной - для студента | 3d | 2024-10-21 | 2024-10-23 |  | Front dev 3 |
| 67 | Модификация страницы просмотра лабораторной - для учителя | 3d | 2024-10-21 | 2024-10-23 |  | Front dev 3 |

Changed:

| ID | Task | Other |
| --- | --- | --- |
| 34 | Создание и редактирование группы | was named Создание редактирование группы |

## Version 3 (saved 2024-06-07)

Note of the change: all tasks

Last finish stays 2024-12-27.

Added:

| ID | Task | Duration | Start | Finish | Predecessors | Resources |
| --- | --- | --- | --- | --- | --- | --- |
| 58 | Получение попыток сдачи | 5d | 2024-09-30 | 2024-10-04 |  | Back dev 3 |
| 74 | Страница просмотра попыток сдачи | 5d | 2024-11-04 | 2024-11-08 | 58 | Front dev 3 |
| 75 | Модальное окно загрузки лабораторных | 5d | 2024-11-11 | 2024-11-15 |  | Front dev 3 |
| 76 | Интеграция попыток сдачи | 5d | 2024-11-18 | 2024-11-22 |  | Back dev 3; Front dev 3 |
| 77 | Проверка лабораторной в новой попытке сдачи | 10d | 2024-10-28 | 2024-11-08 |  | Back dev 3 |
| 78 | Создание сессий сдачи | 5d | 2024-10-28 | 2024-11-01 |  | Back dev 2 |
| 79 | Получение сессий сдачи | 5d | 2024-11-04 | 2024-11-08 |  | Back dev 2 |
| 80 | Поиск и фильтрация сессий сдачи | 5d | 2024-11-11 | 2024-11-15 |  | Back dev 2 |
| 81 | Интеграция сессий сдачи | 5d | 2024-11-18 | 2024-11-22 |  | Back dev 2; Front dev 2 |
| 82 | Просмотр сессий сдачи | 5d | 2024-10-28 | 2024-11-01 |  | Front dev 2 |
| 83 | Просмотр сессий сдачи студентов с поиском | 5d | 2024-11-04 | 2024-11-08 |  | Front dev 2 |
| 84 | Модификация страницы просмотра сессии сдачи - для преподавателя | 5d | 2024-11-11 | 2024-11-15 |  | Front dev 2 |
| 85 | Личная информация по всем пользователям | 5d | 2024-10-28 | 2024-11-01 |  | Back dev 1 |
| 86 | Личная информация пользователя | 5d | 2024-10-28 | 2024-11-01 |  | Back dev 1 |
| 87 | Создание/редактирование пользователя | 5d | 2024-11-04 | 2024-11-08 |  | Back dev 1 |
| 88 | Создание множества пользователей | 5d | 2024-11-11 | 2024-11-15 |  | Back dev 1 |
| 89 | Интеграция пользователей | 5d | 2024-11-18 | 2024-11-22 |  | Back dev 1; Front dev 1 |
| 90 | Модалки создания редактирования пользователя | 5d | 2024-10-28 | 2024-11-01 |  | Front dev 1 |
| 91 | Экран всех пользователей для админа | 5d | 2024-11-04 | 2024-11-08 |  | Front dev 1 |
| 92 | Переход на экран группы | 5d | 2024-11-11 | 2024-11-15 |  | Front dev 1 |
| 100 | Модификация страницы просмотра попытки сдачи - для преподавателя | 5d | 2024-12-16 | 2024-12-20 |  | Front dev 3 |
| 101 | Переход к лабораторной по студенту | 5d | 2024-12-02 | 2024-12-06 |  | Front dev 2 |
| 102 | Фронт: исправление багов | 20d | 2024-12-02 | 2024-12-27 |  | Front dev 1; Front dev 2 |
| 103 | Бэк: исправление багов | 20d | 2024-12-02 | 2024-12-27 |  | Back dev 2; Back dev 3 |
| 104 | Данные для рейтинговой таблицы | 10d | 2024-12-02 | 2024-12-13 |  | Back dev 1 |
| 105 | Интеграция рейтинговой таблицы | 5d | 2024-12-23 | 2024-12-27 |  | Back dev 1; Front dev 1 |
| 106 | Рейтинговая таблица | 10d | 2024-12-02 | 2024-12-13 |  | Front dev 1 |
| 107 | Сортировки по срезу | 5d | 2024-12-16 | 2024-12-20 |  | Front dev 2 |

Changed:

| ID | Task | Start | Finish | Duration | Predecessors | Other |
| --- | --- | --- | --- | --- | --- | --- |
| 49 | Интеграция: тесты | 2024-10-28 → 2024-10-14 (-14d) | 2024-11-01 → 2024-10-18 (-14d) |  |  |  |
| 50 | Модальное окно создания теста | 2024-09-16 → 2024-09-23 (+7d) | 2024-09-20 → 2024-09-27 (+7d) |  |  |  |
| 51 | Модальное окно просмотра теста | 2024-09-23 → 2024-09-30 (+7d) | 2024-09-27 → 2024-10-04 (+7d) |  |  |  |
| 52 | Модальное окно редактирования теста | 2024-09-30 → 2024-10-07 (+7d) | 2024-10-04 → 2024-10-11 (+7d) |  |  |  |
| 53 | Страница просмотра тестов | 2024-09-30 → 2024-10-07 (+7d) | 2024-10-04 → 2024-10-11 (+7d) |  |  |  |
| 54 | Имплементация создания лабораторной | 2024-10-14 → 2024-09-16 (-28d) | 2024-10-18 → 2024-09-20 (-28d) |  |  | resources Back dev 2 → Back dev 3 |
| 55 | Имплементация получения лабораторной | 2024-10-14 → 2024-09-16 (-28d) | 2024-10-18 → 2024-09-20 (-28d) |  |  | resources Back dev 2 → Back dev 3 |
| 56 | Имплементация редактирования лабораторной | 2024-10-21 → 2024-09-23 (-28d) | 2024-10-25 → 2024-09-27 (-28d) |  |  | resources Back dev 2 → Back dev 3 |
| 57 | Имплементация удаления лабораторной | 2024-10-21 → 2024-09-23 (-28d) | 2024-10-25 → 2024-09-27 (-28d) |  |  | resources Back dev 2 → Back dev 3 |
| 59 | Интеграция: лабораторные | 2024-10-28 → 2024-10-14 (-14d) | 2024-11-01 → 2024-10-18 (-14d) |  | 54, 55, 56, 57, 60, 73, 62, 61, 63, 96, 97, 98, 99 → 54, 55, 56, 57, 60, 61, 62, 63 |  |
| 60 | Модальное окно создания лабораторной | 2024-09-16 → 2024-09-23 (+7d) | 2024-09-20 → 2024-09-27 (+7d) |  |  |  |
| 61 | Модальное окно редактирования лабораторной | 2024-09-30 → 2024-09-23 (-7d) | 2024-10-04 → 2024-09-27 (-7d) |  |  |  |
| 62 | Страница просмотра лабораторной | 2024-09-23 → 2024-09-30 (+7d) | 2024-09-27 → 2024-10-04 (+7d) |  |  |  |
| 73 | Часть модального окна создания/редактирования лабораторной - форма выбора тестов | 2024-09-16 → 2024-10-28 (+42d) | 2024-09-20 → 2024-11-01 (+42d) |  | none → 46, 60, 61 |  |
| 96 | Модификация страницы просмотра лабораторных - для студента | 2024-10-14 → 2024-12-02 (+49d) | 2024-10-16 → 2024-12-06 (+51d) | 3d → 5d |  |  |
| 97 | Модификация страницы просмотра лабораторных - для учителя | 2024-10-14 → 2024-12-02 (+49d) | 2024-10-16 → 2024-12-06 (+51d) | 3d → 5d |  |  |
| 98 | Модификация страницы просмотра лабораторной - для студента | 2024-10-21 → 2024-12-09 (+49d) | 2024-10-23 → 2024-12-13 (+51d) | 3d → 5d |  |  |
| 99 | Модификация страницы просмотра лабораторной - для учителя | 2024-10-21 → 2024-12-09 (+49d) | 2024-10-23 → 2024-12-13 (+51d) | 3d → 5d |  |  |

## Version 4 (saved 2024-06-07)

Note of the change: gan2 finished

Last finish stays 2024-12-27.

Added:

| ID | Task | Duration | Start | Finish | Resources |
| --- | --- | --- | --- | --- | --- |
| 14 | Описание API Exec | 5d | 2024-09-09 | 2024-09-13 | Test TL; Test Analyst 2 |
| 18 | Разработка тестовой методологии | 15d | 2024-09-16 | 2024-10-04 | Manager-QA |
| 19 | Изучение требований, терминологии, тестирования | 15d | 2024-09-16 | 2024-10-04 | QA |
| 20 | QA тестов 1 | 10d | 2024-10-07 | 2024-10-18 | Manager-QA [50%]; QA [50%] |
| 28 | Интеграция: базовые тесты | 5d | 2024-10-14 | 2024-10-18 | Sys dev 1; Sys dev 2; Sys dev 3; Sys dev 4 |
| 72 | QA обвязки 1 | 10d | 2024-10-28 | 2024-11-08 | Manager-QA [50%]; QA [50%] |
| 73 | QA тестов 2 | 10d | 2024-11-11 | 2024-11-22 | Manager-QA [50%]; QA [50%] |
| 78 | Интеграция: нагрузочные тесты | 5d | 2024-11-18 | 2024-11-22 | Sys dev 1; Sys dev 2; Sys dev 3; Sys dev 4 |
| 104 | QA обвязки 2 | 10d | 2024-12-02 | 2024-12-13 | Manager-QA [50%]; QA [50%] |
| 105 | Общее QA | 10d | 2024-12-16 | 2024-12-27 | Manager-QA [50%]; QA [50%] |
| 120 | Интеграция: дополнительные тесты | 5d | 2024-12-16 | 2024-12-20 | Sys dev 1; Sys dev 2; Sys dev 3; Sys dev 4 |

Changed:

| ID | Task | Finish | Duration | Other |
| --- | --- | --- | --- | --- |
| 10 | Описание API обвязки |  |  | was named Описание API |
| 13 | Тесты: заготовка | 2024-09-13 → 2024-09-06 (-7d) | 10d → 5d |  |

## Version 5 (saved 2024-06-09)

Note of the change: friday changes + fixed 1 diagram

Last finish stays 2024-12-27.

Added:

| ID | Task | Duration | Start | Finish | Resources |
| --- | --- | --- | --- | --- | --- |
| 4 | Дополнение спецификации API обвязки и Exec | 75d | 2024-09-16 | 2024-12-27 | Architect+Devops |

## Version 6 (saved 2024-06-09)

Note of the change: final 2 sem plan

Last finish 2024-12-27 → 2024-12-30 (+3d).

Added:

| ID | Task | Duration | Start | Finish | Predecessors |
| --- | --- | --- | --- | --- | --- |
| 1 | **OSTEST.ПУИТП** | 85d | 2024-09-02 | 2024-12-27 |  |
| 6 | **Фаза 0 - подготовка** | 10d | 2024-09-02 | 2024-09-13 |  |
| 18 | **Фаза 1** | 25d | 2024-09-16 | 2024-10-18 | 6 |
| 73 | **Фаза 2** | 20d | 2024-10-28 | 2024-11-22 | 18 |

Changed:

| ID | Task | Start | Finish | Predecessors | Other |
| --- | --- | --- | --- | --- | --- |
| 3 | Web: управление |  |  | none → 6 |  |
| 4 | Тесты: управление |  |  | none → 6 |  |
| 5 | Дополнение спецификации API обвязки и Exec |  |  | none → 12, 16 |  |
| 17 | Фаза 0 - дедлайн | 2024-09-13 → 2024-09-16 (+3d) | 2024-09-13 → 2024-09-16 (+3d) | none → 6 | was named Фаза 0: подготовка |
| 23 | QA тестов 1 |  |  | none → 21, 22 |  |
| 31 | Интеграция: базовые тесты |  |  | none → 25, 26, 27, 28, 29, 30, 34, 35, 36, 37 |  |
| 44 | Восстановление пароля |  |  | none → 38 |  |
| 45 | Welcome страница |  |  | none → 38 |  |
| 46 | Страница входа |  |  | none → 38 |  |
| 57 | Интеграция: тесты |  |  | 52, 53, 54, 55, 56, 58, 59, 60, 61 → 51, 52, 53, 54, 55, 56, 58, 59, 60, 61 |  |
| 58 | Модальное окно создания теста |  |  | none → 38 |  |
| 68 | Модальное окно создания лабораторной |  |  | none → 38 |  |
| 69 | Модальное окно редактирования лабораторной |  |  | none → 38 |  |
| 72 | Фаза 1 - дедлайн | 2024-10-25 → 2024-10-28 (+3d) | 2024-10-25 → 2024-10-28 (+3d) | none → 18 | was named Фаза 1 |
| 82 | Интеграция: нагрузочные тесты |  |  | none → 78, 79, 80, 81, 83, 84 |  |
| 87 | Модальное окно загрузки лабораторных |  |  | none → 86 |  |
| 88 | Интеграция попыток сдачи |  |  | none → 85, 86, 87, 89 |  |
| 93 | Интеграция сессий сдачи |  |  | none → 90, 91, 92, 94, 95, 96 |  |
| 101 | Интеграция пользователей |  |  | none → 97, 98, 99, 100, 102, 103, 104 |  |
| 105 | Фаза 2 - дедлайн | 2024-11-29 → 2024-12-02 (+3d) | 2024-11-29 → 2024-12-02 (+3d) | none → 73 | was named Фаза 2 |
| 106 | **Фаза 3** |  |  | none → 73 | was named Тесты: доанализ требований 3; resources Test Analyst 1 → none |
| 119 | Интеграция рейтинговой таблицы |  |  | none → 118, 120, 121 |  |
| 121 | Сортировки по срезу |  |  | none → 118 |  |
| 124 | Интеграция: дополнительные тесты |  |  | none → 122, 123, 125, 126 |  |
| 127 | Фаза 3-дедлайн | 2024-12-27 → 2024-12-30 (+3d) | 2024-12-27 → 2024-12-30 (+3d) | none → 106FF | was named Фаза 3 |
